# 雷龙

Schedule from a web Gantt chart, 2025-07-17 to 2026-02-22.
Every day is a working day

## Schedule

| ID | WBS | Task | Duration | Start | Finish | Predecessors | Complete | Status |
| --- | --- | --- | --- | --- | --- | --- | --- | --- |
| 2 | 1 | **设计** | 40d | 2025-07-17 | 2025-08-25 |  | 100% | done |
| 3 | 1.1 | Kick OFF | 2d | 2025-07-17 | 2025-07-18 |  | 100% | done |
| 4 | 1.2 | PDK layout | 7d | 2025-07-17 | 2025-07-23 |  | 100% | done |
| 5 | 1.3 | CP probe card--悬臂针 | 33d | 2025-07-17 | 2025-08-18 |  | 100% | done |
| 6 | 1.4 | CP probe card--垂直针 | 40d | 2025-07-17 | 2025-08-25 |  | 100% | done |
| 7 | 2 | **摸底研究** | 60d | 2025-07-28 | 2025-09-25 |  | 100% | done |
| 8 | 2.1 | **ZH 摸底** | 60d | 2025-07-28 | 2025-09-25 |  | 100% | done |
| 9 | 2.1.1 | WAFER PROCESS | 14d | 2025-07-28 | 2025-08-10 |  | 100% | done |
| 10 | 2.1.2 | PKG | 30d | 2025-08-12 | 2025-09-10 |  | 100% | done |
| 11 | 2.1.3 | FT | 2d | 2025-09-11 | 2025-09-12 |  | 100% | done |
| 12 | 2.1.4 | AE 测试 | 13d | 2025-09-13 | 2025-09-25 |  | 100% | done |
| 13 | 2.2 | **Suz 摸底** | 59d | 2025-07-29 | 2025-09-25 |  | 100% | done |
| 14 | 2.2.1 | Wafer process | 18d | 2025-07-29 | 2025-08-15 |  | 100% | done |
| 15 | 2.2.2 | PKG | 23d | 2025-08-19 | 2025-09-10 |  | 100% | done |
| 16 | 2.2.3 | FT | 2d | 2025-09-11 | 2025-09-12 |  | 100% | done |
| 17 | 2.2.4 | AE 测试 | 14d | 2025-09-12 | 2025-09-25 |  | 100% | done |
| 18 | 3 | **pre qual. lot** | 134d | 2025-08-20 | 2025-12-31 |  | 35% |  |
| 19 | 3.1 | WAFER PROCESS | 17d | 2025-08-20 | 2025-09-05 |  | 100% | done |
| 20 | 3.2 | CP test | 14d | 2025-09-06 | 2025-09-19 | 19 | 100% | done |
| 21 | 3.3 | PKG | 23d | 2025-09-25 | 2025-10-17 |  | 73% |  |
| 22 | 3.4 | FT | 5d | 2025-10-18 | 2025-10-22 | 21 |  | waiting |
| 23 | 3.5 | RE qual. | 70d | 2025-10-23 | 2025-12-31 | 22 |  | waiting |
| 24 | 3.6 | PE bench test | 9d | 2025-10-23 | 2025-10-31 | 22 |  | waiting |
| 25 | 4 | **1st Qual. lot** | 106d | 2025-10-23 | 2026-02-05 |  |  |  |
| 26 | 4.1 | CP | 3d | 2025-10-23 | 2025-10-25 |  |  |  |
| 27 | 4.2 | PKG+FT | 23d | 2025-10-29 | 2025-11-20 |  |  |  |
| 28 | 4.3 | CSR | 7d | 2025-11-21 | 2025-11-27 |  |  |  |
| 29 | 4.4 | D-RON | 7d | 2025-11-21 | 2025-11-27 |  |  |  |
| 30 | 4.5 | RE 168H | 77d | 2025-11-21 | 2026-02-05 |  |  |  |
| 31 | 4.6 | PE bench test | 9d | 2025-11-27 | 2025-12-05 |  |  |  |
| 32 | 4.7 | RE 1000H | 65d | 2025-11-20 | 2026-01-23 |  |  |  |

| ID | WBS | Task | Duration | Start | Finish | Predecessors | Complete | Status |
| --- | --- | --- | --- | --- | --- | --- | --- | --- |
| 33 | 5 | **2nd Qual. lot** | 123d | 2025-10-23 | 2026-02-22 |  | 33% |  |
| 34 | 5.1 | WAFER PROCESS | 19d | 2025-10-23 | 2025-11-10 |  | 100% |  |
| 35 | 5.2 | CP test | 7d | 2025-11-11 | 2025-11-17 | 34 | 100% | waiting |
| 36 | 5.3 | PKG+FT | 25d | 2025-11-18 | 2025-12-12 | 35 | 73% | waiting |
| 37 | 5.4 | CSR | 1d | 2025-12-13 | 2025-12-13 | 36 |  | waiting |
| 38 | 5.5 | PE Bench test | 9d | 2025-12-13 | 2025-12-21 | 36 |  | waiting |
| 39 | 5.6 | RE 1000H | 72d | 2025-12-13 | 2026-02-22 | 36 |  | waiting |
| 40 | 6 | **3rd Qual. lot** | 102d | 2025-10-28 | 2026-02-06 |  | 44% |  |
| 41 | 6.1 | WAFER PRCESS | 24d | 2025-10-28 | 2025-11-20 |  | 100% |  |
| 42 | 6.2 | CP test | 7d | 2025-11-21 | 2025-11-27 | 41 | 100% | waiting |
| 43 | 6.3 | PKG+FT | 26d | 2025-11-27 | 2025-12-22 |  | 73% |  |
| 44 | 6.4 | PE bench test | 9d | 2025-12-20 | 2025-12-28 |  |  | waiting |
| 45 | 6.5 | RE 1000H | 49d | 2025-12-20 | 2026-02-06 |  |  | waiting |
